# Cronograma Sapienter v2.1

How a schedule from MS Project changed from version to version. A marks actual dates.

## Version 1 (saved 2011-04-29)

| ID | WBS | Task | Duration | Start | Finish | Predecessors | Complete | Total float | Constraint |
| --- | --- | --- | --- | --- | --- | --- | --- | --- | --- |
| 1 | 1 | **Gestión de proyecto** | 96d | 2011-04-05 | 2011-10-11 |  |  | 3d |  |
| 2 | 1.1 | **Control de avance** | 96d | 2011-04-05 | 2011-10-11 |  |  | 3d |  |
| 3 |  | Control de avance 1 | 1d | 2011-04-05 | 2011-04-05 |  |  | 100d | start no earlier than 2011-04-05 |
| 4 |  | Control de avance 2 | 1d | 2011-04-12 | 2011-04-12 |  |  | 96d | start no earlier than 2011-04-12 |
| 5 |  | Control de avance 3 | 1d | 2011-04-19 | 2011-04-19 |  |  | 92d | start no earlier than 2011-04-19 |
| 6 |  | Control de avance 4 | 1d | 2011-04-26 | 2011-04-26 |  |  | 88d | start no earlier than 2011-04-26 |
| 7 |  | Control de avance 5 | 1d | 2011-05-03 | 2011-05-03 |  |  | 84d | start no earlier than 2011-05-03 |
| 8 |  | Control de avance 6 | 1d | 2011-05-10 | 2011-05-10 |  |  | 80d | start no earlier than 2011-05-10 |
| 9 |  | Control de avance 7 | 1d | 2011-05-17 | 2011-05-17 |  |  | 76d | start no earlier than 2011-05-17 |
| 10 |  | Control de avance 8 | 1d | 2011-05-24 | 2011-05-24 |  |  | 72d | start no earlier than 2011-05-24 |
| 11 |  | Control de avance 9 | 1d | 2011-05-31 | 2011-05-31 |  |  | 68d | start no earlier than 2011-05-31 |
| 12 |  | Control de avance 10 | 1d | 2011-06-07 | 2011-06-07 |  |  | 64d | start no earlier than 2011-06-07 |
| 13 |  | Control de avance 11 | 1d | 2011-06-14 | 2011-06-14 |  |  | 60d | start no earlier than 2011-06-14 |
| 14 |  | Control de avance 12 | 1d | 2011-06-21 | 2011-06-21 |  |  | 56d | start no earlier than 2011-06-21 |
| 15 |  | Control de avance 13 | 1d | 2011-06-28 | 2011-06-28 |  |  | 52d | start no earlier than 2011-06-28 |
| 16 |  | Control de avance 14 | 1d | 2011-07-05 | 2011-07-05 |  |  | 48d | start no earlier than 2011-07-05 |
| 17 |  | Control de avance 15 | 1d | 2011-07-12 | 2011-07-12 |  |  | 44d | start no earlier than 2011-07-12 |
| 18 |  | Control de avance 16 | 1d | 2011-08-06 | 2011-08-06 |  |  | 43d | start no earlier than 2011-07-19 |
| 19 |  | Control de avance 17 | 1d | 2011-08-06 | 2011-08-06 |  |  | 43d | start no earlier than 2011-07-26 |
| 20 |  | Control de avance 18 | 1d | 2011-08-06 | 2011-08-06 |  |  | 43d | start no earlier than 2011-08-02 |
| 21 |  | Control de avance 19 | 1d | 2011-08-09 | 2011-08-09 |  |  | 41d | start no earlier than 2011-08-09 |
| 22 |  | Control de avance 20 | 1d | 2011-08-16 | 2011-08-16 |  |  | 37d | start no earlier than 2011-08-16 |
| 23 |  | Control de avance 21 | 1d | 2011-08-23 | 2011-08-23 |  |  | 33d | start no earlier than 2011-08-23 |
| 24 |  | Control de avance 22 | 1d | 2011-08-30 | 2011-08-30 |  |  | 29d | start no earlier than 2011-08-30 |
| 25 |  | Control de avance 23 | 1d | 2011-09-06 | 2011-09-06 |  |  | 25d | start no earlier than 2011-09-06 |
| 26 |  | Control de avance 24 | 1d | 2011-09-13 | 2011-09-13 |  |  | 21d | start no earlier than 2011-09-13 |
| 27 |  | Control de avance 25 | 1d | 2011-09-20 | 2011-09-20 |  |  | 17d | start no earlier than 2011-09-20 |
| 28 |  | Control de avance 26 | 1d | 2011-09-27 | 2011-09-27 |  |  | 13d | start no earlier than 2011-09-27 |
| 29 |  | Control de avance 27 | 1d | 2011-10-04 | 2011-10-04 |  |  | 9d | start no earlier than 2011-10-04 |
| 30 |  | Control de avance 28 | 1d | 2011-10-11 | 2011-10-11 |  |  | 5d | start no earlier than 2011-10-11 |
| 32 | 2 | **Planificación** | 58d | 2011-04-08 A | 2011-08-07 |  | 76% | 40d |  |
| 33 |  | WBS | 3d | 2011-04-08 A | 2011-04-10 A |  | 100% |  | start no earlier than 2011-04-08 |
| 34 |  | Matriz de roles | 3d | 2011-04-15 A | 2011-04-17 A | 33 | 100% |  | finish no earlier than 2011-04-17 |
| 35 |  | Plan de proyecto | 7d | 2011-04-15 A | 2011-04-24 A | 33 | 100% |  | start no earlier than 2011-04-15 |
| 36 |  | Matriz de comunicaciones | 3d | 2011-04-22 A | 2011-04-24 A | 33 | 100% |  | start no earlier than 2011-04-22 |
| 37 |  | Estudio de viavilidad y analisis de Riesgos | 3d | 2011-07-01 | 2011-07-03 | 35 |  | 47d | start no earlier than 2011-07-01 |
| 38 |  | Plan de GCSW | 2d | 2011-08-06 | 2011-08-07 | 37 |  | 42d | start no earlier than 2011-08-06 |
| 40 | 3 | **Relevamiento - Requerimientos** | 11d | 2011-04-22 | 2011-05-08 | 33 |  | 13d |  |
| 41 |  | Informe de Relevamiento | 7d | 2011-04-22 | 2011-05-01 | 33 |  | 9d | start no earlier than 2011-04-22 |
| 42 |  | Informe de Esp. Requerimientos | 4d | 2011-05-03 | 2011-05-08 | 41 |  | 9d | start no earlier than 2011-05-03 |
| 44 | 4 | **Analisis y Diseño** | 41d | 2011-05-10 | 2011-08-12 | 40 |  | 13d |  |
| 45 |  | Diagrama Gral. Casos de Uso | 4d | 2011-05-10 | 2011-05-15 | 42 |  | 13d |  |
| 46 |  | Especificaciones de cada Caso de Uso | 4d | 2011-05-10 | 2011-05-15 | 42 |  | 13d |  |
| 47 |  | Diagramas de Secuencia | 5d | 2011-05-20 | 2011-05-27 | 45, 46 |  | 12d | start no earlier than 2011-05-20 |
| 48 |  | Diagramas de Colaboración | 5d | 2011-05-28 | 2011-06-04 | 47 |  | 12d |  |
| 49 |  | Diagramas de Actividades | 5d | 2011-05-28 | 2011-06-04 | 47 |  | 12d |  |
| 50 |  | Diagramas de estados | 5d | 2011-05-28 | 2011-06-04 | 47 |  | 12d |  |
| 51 |  | Diagrama e integración de capas | 5d | 2011-06-05 | 2011-06-12 | 48, 49, 50 |  | 12d |  |
| 52 |  | Diagrama de Clases | 5d | 2011-06-14 | 2011-06-21 | 51 |  | 12d |  |
| 53 |  | Diagrama Entidad Relacion | 5d | 2011-06-14 | 2011-06-21 | 51 |  | 50d |  |
| 54 |  | Prototipos de interfaces | 6d | 2011-06-18 | 2011-06-26 | 51 |  | 47d | start no earlier than 2011-06-18 |
| 55 |  | Diagrama de Componentes | 4d | 2011-07-08 | 2011-07-12 | 52 |  | 34d | start no earlier than 2011-07-08 |
| 56 |  | Documentación De Arquitectura | 4d | 2011-08-06 | 2011-08-12 | 55 |  | 34d |  |
| 58 | 5 | **Presentación Comercial** | 4d | 2011-08-13 | 2011-08-19 | 44 |  | 34d |  |
| 59 |  | Planificación presentación | 2d | 2011-08-13 | 2011-08-14 | 44 |  | 34d |  |
| 60 |  | Documentación para presentación | 2d | 2011-08-16 | 2011-08-19 | 59 |  | 34d |  |
| 61 |  | Simulación presentación | 1d | 2011-08-16 | 2011-08-16 | 59 |  | 35d |  |
| 63 | 6 | **Desarrollo Software** | 42d | 2011-08-06 | 2011-10-16 | 52 |  | 0d |  |
| 64 | 6.1 | **Iteración 1** | 11d | 2011-08-06 | 2011-08-23 | 52 |  | 0d |  |
| 65 |  | Selección de requerimientos a incluir en la iteración | 1d | 2011-08-06 | 2011-08-06 | 52 |  | 0d | start no earlier than 2011-08-06 |
| 66 |  | Desarrollo de los requerimientos | 9d | 2011-08-07 | 2011-08-21 | 65 |  | 0d |  |
| 67 |  | Test de los requerimientos de la iteración | 9d | 2011-08-07 | 2011-08-21 | 65 |  | 0d |  |
| 68 |  | Ciierre iteración | 1d | 2011-08-23 | 2011-08-23 | 66, 67 |  | 0d |  |
| 69 | 6.2 | **Iteración 2** | 11d | 2011-08-26 | 2011-09-11 | 64 |  | 0d |  |
| 70 |  | Selección de requerimientos a incluir en la iteración | 1d | 2011-08-26 | 2011-08-26 | 64 |  | 0d | start no earlier than 2011-08-06 |
| 71 |  | Desarrollo de los requerimientos | 9d | 2011-08-27 | 2011-09-10 | 70 |  | 0d |  |
| 72 |  | Test de los requerimientos de la iteración | 9d | 2011-08-27 | 2011-09-10 | 70 |  | 0d |  |
| 73 |  | Ciierre iteración | 1d | 2011-09-11 | 2011-09-11 | 71, 72 |  | 0d |  |
| 74 | 6.3 | **Iteración 3** | 11d | 2011-09-13 | 2011-10-01 | 69 |  | 0d |  |
| 75 |  | Selección de requerimientos a incluir en la iteración | 1d | 2011-09-13 | 2011-09-13 | 69 |  | 0d |  |

| ID | WBS | Task | Duration | Start | Finish | Predecessors | Total float |
| --- | --- | --- | --- | --- | --- | --- | --- |
| 76 |  | Desarrollo de los requerimientos | 9d | 2011-09-16 | 2011-09-30 | 75 | 0d |
| 77 |  | Test de los requerimientos de la iteración | 9d | 2011-09-16 | 2011-09-30 | 75 | 0d |
| 78 |  | Ciierre iteración | 1d | 2011-10-01 | 2011-10-01 | 76, 77 | 0d |
| 79 | 6.4 | **Test integral** | 9d | 2011-10-02 | 2011-10-16 | 74 | 0d |
| 80 |  | Documento de casos de pruebas | 2d | 2011-10-02 | 2011-10-04 | 74 | 0d |
| 81 |  | Testing | 7d | 2011-10-07 | 2011-10-16 | 80 | 0d |
| 82 | 6.5 | **Documentación** | 5d | 2011-10-02 | 2011-10-09 | 74 | 4d |
| 83 |  | Manual de usuario | 5d | 2011-10-02 | 2011-10-09 | 74 | 4d |
| 84 |  | Manual de Instalación | 5d | 2011-10-02 | 2011-10-09 | 74 | 4d |
| 86 | 7 | **Cierre de proyecto** | 3d | 2011-10-18 | 2011-10-22 | 63, 82, 58, 44, 40, 32, 1 | 0d |
| 87 |  | Documento de aceptación y cierre del proyecto | 3d | 2011-10-18 | 2011-10-22 | 63, 82, 58, 44, 40, 32, 1 | 0d |
| 88 |  | Lecciones Aprendidas | 3d | 2011-10-18 | 2011-10-22 | 63, 82, 58, 44, 40, 32, 1 | 0d |

## Version 2 (saved 2011-04-30)

Last finish stays 2011-10-22.

Added:

| ID | Task | Duration | Start | Finish | Predecessors | Constraint |
| --- | --- | --- | --- | --- | --- | --- |
| 41 | Entrevistas | 3d | 2011-04-22 | 2011-04-24 | 33 | start no earlier than 2011-04-22 |

Changed:

| ID | Task | Start | Finish | Duration | Total float | Predecessors | Other |
| --- | --- | --- | --- | --- | --- | --- | --- |
| 40 | **Relevamiento** |  | 2011-05-08 → 2011-05-01 (-7d) | 11d → 7d |  |  | was named Relevamiento - Requerimientos |
| 42 | Informe de Relevamiento | 2011-04-22 → 2011-04-26 (+4d) |  | 7d → 4d | 9d → 13d | 33 → 41 |  |
| 44 | **Analisis y Diseño** | 2011-05-10 → 2011-05-03 (-7d) |  | 41d → 45d |  |  |  |

## Version 3 (saved 2011-05-17)

Note of the change: Corrección ortografica

Last finish stays 2011-10-22.

Changed:

| ID | Task | Other |
| --- | --- | --- |
| 69 | Cierre iteración | was named Ciierre iteración |
| 74 | Cierre iteración | was named Ciierre iteración |
| 79 | Cierre iteración | was named Ciierre iteración |
